# National Health Campaign

Schedule from MS Project, 2024-03-01 to 2024-05-06, costs in €, A marks actual dates.
Research Programme
ABC Research Ltd

## Calendars

- Standard: Mon-Fri 08:00-12:00, 13:00-17:00; Sat-Sun off.

## Resources

| Resource | Group | Rate |
| --- | --- | --- |
| Joanne Kelly | Management | 19.23 |
| Riona Carr | Executive | 6.25 |
| Mary Breen | Management | 19.23 |
| Tom Joyce | Office Staff | 6.88 |
| Conf Room | Facilities |  |
| Junior Staff | Office Staff | 30 |
| Printing | External |  |

## Schedule

| ID | WBS | Task | Type | Duration | Start | Finish | Predecessors | Complete | Remaining | Actual finish | Baseline start | Baseline finish | Baseline duration | Total slack | Free slack | Resources | Work | Actual work | Cost | Baseline cost | Actual cost |
| --- | --- | --- | --- | --- | --- | --- | --- | --- | --- | --- | --- | --- | --- | --- | --- | --- | --- | --- | --- | --- | --- |
| 1 | 1 | **National Health Campaign** |  | 46d | 2024-03-01 A | 2024-05-06 |  | 100% |  | 2024-03-04 | 2024-03-01 | 2024-05-06 | 46d |  |  |  | 16h | 16h | 307.69 | 307.69 | 307.69 |
| 2 | 1.1 | **Planning** |  | 13d | 2024-03-01 A | 2024-03-19 |  | 100% |  | 2024-03-04 | 2024-03-01 | 2024-03-19 | 13d |  |  |  | 16h | 16h | 307.69 | 307.69 | 307.69 |
| 3 | 1.1.1 | Design questionnaire |  | 2d | 2024-03-01 A | 2024-03-04 A |  | 100% |  |  | 2024-03-01 | 2024-03-04 | 2d |  |  | Joanne Kelly | 16h | 16h | 307.69 | 307.69 | 307.69 |
| 4 | 2 | Type questionnaire |  | 2d? | 2024-03-05 A | 2024-03-06 A | 3 | 100% |  |  | 2024-03-05 | 2024-03-06 | 2d? |  |  | Junior Staff | 16h | 16h | 480 | 480 | 480 |
| 5 | 3 | Print questionnaire |  | 1w | 2024-03-06 A | 2024-03-12 | 4 | 50% | 0.5w |  | 2024-03-06 | 2024-03-12 | 1w | 0.38d | 0d | Printing | 40h | 20h |  |  |  |
| 6 | 4 | Invite interviewers to briefing meeting |  | 3d | 2024-03-06 | 2024-03-08 | 5SS |  |  |  | 2024-03-06 | 2024-03-08 | 3d | 2d | 0d | Riona Carr | 24h |  | 150 | 150 |  |
| 7 | 5 | Survey planning complete | milestone | 0d | 2024-03-08 A | 2024-03-08 | 6 | 75% | 0d |  | 2024-03-08 | 2024-03-08 | 0d | 2d |  | Tom Joyce |  |  |  |  |  |
| 8 | 6 | **Brefing Setup** |  | 33.5d | 2024-03-13 A | 2024-04-29 | 7 | 73% | 8.89d |  | 2024-03-13 | 2024-04-29 | 33.5d | 4.5d |  |  |  |  |  |  |  |
| 9 | 6.1 | Book conference room for briefing meeting |  | 4h | 2024-03-13 A | 2024-03-13 | 5 | 75% | 1h |  | 2024-03-13 | 2024-03-13 | 4h | 37.5d |  |  |  |  |  |  |  |
| 10 | 6.2 | Contact interviewing locations |  | 2d | 2024-03-13 A | 2024-03-15 A | 9 | 100% |  |  | 2024-03-13 | 2024-03-15 | 2d |  |  |  |  |  |  |  |  |
| 11 | 6.3 | Prepare rosters |  | 4d | 2024-03-13 A | 2024-03-19 A | 10SS | 100% |  |  | 2024-03-13 | 2024-03-19 | 4d |  |  |  |  |  |  |  |  |
| 12 | 6.4 | Prepare packs for each interviewer |  | 3d | 2024-03-19 A | 2024-03-22 A | 11 | 100% |  |  | 2024-03-19 | 2024-03-22 | 3d |  |  |  |  |  |  |  |  |
| 13 | 6.5 | Briefing Meeting with Interviewers |  | 4h | 2024-03-22 A | 2024-03-22 A | 12 | 100% |  |  | 2024-03-22 | 2024-03-22 | 4h |  |  |  |  |  |  |  |  |
| 14 | 6.6 | Interviewers briefing complete | milestone | 0d | 2024-03-22 | 2024-03-22 | 13 |  |  |  | 2024-03-22 | 2024-03-22 | 0d | 0d |  |  |  |  |  |  |  |
| 15 | 6.7 | **Data Processing** |  | 25.5d | 2024-03-25 A | 2024-04-29 | 14 | 62% | 9.63d |  | 2024-03-25 | 2024-04-29 | 25.5d | 4.5d |  |  |  |  |  |  |  |
| 16 | 6.7.1 | Prepare Book-in forms |  | 2d | 2024-03-25 A | 2024-03-26 A |  | 100% |  |  | 2024-03-25 | 2024-03-26 | 2d |  |  |  |  |  |  |  |  |
| 17 | 6.7.2 | Check questionnaires |  | 2d | 2024-03-27 A | 2024-03-28 | 16 | 75% | 0.5d |  | 2024-03-27 | 2024-03-28 | 2d | 26d |  |  |  |  |  |  |  |
| 18 | 6.7.3 | Code questionnaires |  | 1.5w | 2024-03-29 A | 2024-04-09 A | 17 | 100% |  |  | 2024-03-29 | 2024-04-09 | 1.5w |  |  |  |  |  |  |  |  |
| 19 | 6.7.4 | Input data in computer |  | 3d | 2024-04-09 A | 2024-04-12 A | 18 | 100% |  |  | 2024-04-09 | 2024-04-12 | 3d |  |  |  |  |  |  |  |  |
| 20 | 6.7.5 | Data processing complete | milestone | 0d | 2024-04-17 | 2024-04-17 | 19FS+3d |  |  |  | 2024-04-17 | 2024-04-17 | 0d | 4.5d | 0d |  |  |  |  |  |  |
| 21 | 6.7.6 | **Interpretation** |  | 8d | 2024-04-17 | 2024-04-29 | 20 |  |  |  | 2024-04-17 | 2024-04-29 | 8d | 4.5d |  |  |  |  |  |  |  |
| 22 | 6.7.6.1 | Prepare presentation |  | 3d | 2024-04-17 | 2024-04-22 |  |  |  |  | 2024-04-17 | 2024-04-22 | 3d | 4.5d | 0d |  |  |  |  |  |  |
| 23 | 6.7.6.2 | Prepare research report |  | 1w | 2024-04-22 | 2024-04-29 | 22 |  |  |  | 2024-04-22 | 2024-04-29 | 1w | 4.5d | 0d |  |  |  |  |  |  |
| 24 | 6.7.6.3 | Project complete | milestone | 0d | 2024-04-29 | 2024-04-29 | 23 |  |  |  | 2024-04-29 | 2024-04-29 | 0d | 4.5d |  |  |  |  |  |  |  |
